Schedule from MS Project, 2006-10-09 to 2009-03-06, status date 2007-05-14, A marks actual dates.

## Calendars

- 优易软件日历: Mon-Fri 08:30-12:00, 13:30-18:00; Sat-Sun off. Exceptions (off unless hours are given): 2006-10-09 to 2006-10-13 08:30-12:00, 13:30-18:00, 2006-10-16 to 2006-10-20 08:30-12:00, 13:30-18:00, 2006-10-23 to 2006-10-27 08:30-12:00, 13:30-18:00, 2006-10-30 to 2006-11-03 08:30-12:00, 13:30-18:00, 2006-11-06 to 2006-11-10 08:30-12:00, 13:30-18:00, 2006-11-13 to 2006-11-17 08:30-12:00, 13:30-18:00, 2006-11-20 to 2006-11-24 08:30-12:00, 13:30-18:00, 2006-11-27 to 2006-12-01 08:30-12:00, 13:30-18:00, 2006-12-04 to 2006-12-08 08:30-12:00, 13:30-18:00, 2006-12-11 to 2006-12-15 08:30-12:00, 13:30-18:00, 2006-12-18 to 2006-12-22 08:30-12:00, 13:30-18:00, 2006-12-25 to 2006-12-29 08:30-12:00, 13:30-18:00, 2007-01-01 to 2007-01-05 08:30-12:00, 13:30-18:00, 2007-01-06 08:30-12:00, 13:00-18:00, 2007-01-08 to 2007-01-12 08:30-12:00, 13:30-18:00, 2007-01-13 08:30-12:00, 13:00-18:00, 2007-01-15 to 2007-01-19 08:30-12:00, 13:30-18:00, 2007-01-22 to 2007-01-26 08:30-12:00, 13:30-18:00, 2007-01-29 to 2007-02-03 08:30-12:00, 13:30-18:00, 2007-02-05 to 2007-02-10 08:30-12:00, 13:30-18:00, 2007-02-12 to 2007-02-15 08:30-12:00, 13:30-18:00, 2007-02-16 to 2007-02-17, 2007-02-19 to 2007-02-24, 2007-02-25 08:30-12:00, 13:00-17:30, 2007-02-26 to 2007-03-02 08:30-12:00, 13:30-18:00, 2007-03-05 to 2007-03-09 08:30-12:00, 13:30-18:00, 2007-03-12 to 2007-03-16 08:30-12:00, 13:30-18:00, 2007-03-19 to 2007-03-23 08:30-12:00, 13:30-18:00, 2007-03-26 to 2007-03-30 08:30-12:00, 13:30-18:00, 2007-04-02 to 2007-04-06 08:30-12:00, 13:30-18:00, 2007-04-09 to 2007-04-13 08:30-12:00, 13:30-18:00, 2007-04-16 to 2007-04-20 08:30-12:00, 13:30-18:00, 2007-04-23 to 2007-04-30 08:30-12:00, 13:30-18:00, 2007-05-01 to 2007-05-04, 2007-05-07, 2007-05-08 to 2007-05-11 08:30-12:00, 13:30-18:00, 2007-05-14 to 2007-05-15 08:30-12:00, 13:30-18:00, 2007-05-19 to 2007-05-20 08:00-12:00, 13:00-17:00, 2007-05-27 08:00-12:00, 13:00-17:00, 2007-06-03 08:00-12:00, 13:00-17:00, 2007-06-23 08:00-12:00, 13:00-17:00, 2007-07-14 08:00-12:00, 13:00-17:00, 2007-08-11 08:00-12:00, 13:00-17:00, 2007-08-18 08:00-12:00, 13:00-17:00, 2007-12-01 08:00-12:00, 13:00-17:00, 2008-02-09 08:00-12:00, 13:00-17:00, 2008-02-16 08:00-12:00, 13:00-17:00, 2008-03-01 08:00-12:00, 13:00-17:00.

## Resources

| Resource | Rate |
| --- | --- |
| 陶程英 |  |
| 邝祝芳 |  |
| 曾勇 |  |
| 贺灏 |  |
| 张阿苏 |  |
| 郑旭 |  |
| 李波 |  |
| 谢吉祥 |  |
| 周诗语 |  |
| 夏浪 |  |
| 陈百炼 |  |
| 审核小组 |  |
| 周进 |  |
| 胡舟 |  |
| 郭新 |  |
| 罗维维 |  |
| 姚亚平 |  |
| 龙式荣 |  |
| 邝祝芳 姚亚平 |  |
| 姚亚平 罗伟伟 |  |
| 刘英 |  |
| 廖春霞 |  |
| 侯佳 |  |
| 刘英 侯佳 廖春霞 |  |
| 李波 张阿苏 |  |
| 刘发元 |  |
| 罗伟伟 |  |
| 邝祝芳 罗伟伟 |  |
| 刘英 侯佳 廖春霞 刘小平 |  |
| 刘小平 |  |
| 贺彩安 |  |
| 王枭 |  |
| 吴国仁 |  |
| 检测小组 |  |
| 全体人员 |  |
| 计算机 | 3050 |
| 柜式空调 | 6000 |
| 壁挂式空调 | 2600 |
| 陈展平 |  |
| 刘贻凤 |  |
| 谢辉 |  |
| 尹笑辉 |  |
| 罗维 |  |
| 李双平 |  |
| 郭晓晨 |  |
| 彭范庚 |  |
| 刘英 廖春霞 刘小平 |  |
| 刘英 廖春霞 刘小平 |  |
| 刘玉春 |  |
| 王小亚 |  |
| 分析人员 |  |
| 项目经理 |  |
| 管理人员 |  |
| 开发人员 |  |
| 测试人员 |  |
| 培训人员 |  |
| 技术联络人员 |  |
| 刘英 刘玉春 王小亚 |  |
| 刘贻凤 贺灏 |  |
| 安永丽 冯睿娜 |  |
| 胡发连 |  |
| 郑明波 |  |
| 章科文 |  |
| 任平凡 |  |
| 侯松林 |  |
| 陈欧美 |  |
| 罗绍卓 |  |

## Schedule

| ID | WBS | Task | Type | Duration | Start | Finish | Complete | Remaining | Total slack | Constraint |
| --- | --- | --- | --- | --- | --- | --- | --- | --- | --- | --- |
| 1 | 1 | **第一次迭代** |  | 33.88d? | 2006-10-09 08:00 A | 2006-11-23 17:00 A | 100% |  |  |  |
| 2 | 1.1 | 分析整体的层次管理结构 |  | 1.88d | 2006-10-09 08:00 A | 2006-10-10 17:00 A | 100% |  |  |  |
| 3 | 1.2 | 建立用例 |  | 4.88d | 2006-10-11 08:00 A | 2006-10-17 17:00 A | 100% |  |  |  |
| 4 | 1.3 | 设计 |  | 9.88d | 2006-10-18 08:00 A | 2006-10-31 17:00 A | 100% |  |  |  |
| 5 | 1.4 | **编码/测试** |  | 16.88d? | 2006-11-01 08:00 A | 2006-11-23 17:00 A | 100% |  |  |  |
| 6 | 1.4.1 | 导航栏的开发 |  | 4.88d? | 2006-11-02 08:00 A | 2006-11-08 17:00 A | 100% |  |  | start no earlier than 2006-11-02 08:00 |
| 7 | 1.4.2 | 管道层次结构开发 |  | 5.88d? | 2006-11-01 08:00 A | 2006-11-08 17:00 A | 100% |  |  | start no earlier than 2006-11-01 08:00 |
| 8 | 1.4.3 | 整体框架的存储 |  | 9.88d? | 2006-11-09 08:00 A | 2006-11-22 17:00 A | 100% |  |  |  |
| 9 | 1.4.4 | 具体表的存储 |  | 8.88d? | 2006-11-09 08:00 A | 2006-11-21 17:00 A | 100% |  |  | finish no earlier than 2006-11-21 17:00 |
| 10 | 1.4.5 | 项目的打开登陆 |  | 8.88d? | 2006-11-09 08:00 A | 2006-11-21 17:00 A | 100% |  |  | finish no earlier than 2006-11-21 17:00 |
| 11 | 1.4.6 | 测试 |  | 1.88d | 2006-11-22 08:00 A | 2006-11-23 17:00 A | 100% |  |  |  |
| 12 | 1.5 | 迭代一成果 | milestone | 0d | 2006-11-23 17:00 A | 2006-11-23 17:00 A | 100% |  |  |  |
| 13 | 2 | **第二次迭代** |  | 48d? | 2006-10-09 08:30 A | 2006-12-13 18:00 | 78% | 10.76d? | 590.12d |  |
| 14 | 2.1 | **分析pdms的属性库结构** |  | 10.88d | 2006-10-09 08:30 A | 2006-10-23 17:00 | 87% | 1.4d | 627.25d |  |
| 15 | 2.1.1 | 了解PROPERTIES库 |  | 4.88d | 2006-10-13 08:00 A | 2006-10-19 17:00 A | 100% |  |  | finish no earlier than 2006-10-19 17:00 |
| 16 | 2.1.2 | 分析属性库结构 |  | 1.88d | 2006-10-20 08:00 A | 2006-10-23 17:00 A | 100% |  |  |  |
| 17 | 2.1.3 | 提出属性库结构 |  | 1d | 2006-10-09 08:30 | 2006-10-09 18:00 |  |  | 299.12d |  |
| 18 | 2.1.4 | 属性库设计方案 | milestone | 0d | 2006-10-09 08:30 | 2006-10-09 08:30 |  |  | 300.12d |  |
| 19 | 2.2 | **等级库** |  | 23.88d? | 2006-10-26 08:00 A | 2006-11-28 17:00 A | 100% |  |  |  |
| 20 | 2.2.1 | 了解pdms等级库 |  | 1.88d? | 2006-10-26 08:00 A | 2006-10-27 17:00 A | 100% |  |  | start no earlier than 2006-10-26 08:00 |
| 21 | 2.2.2 | 分析pdms的等级库结构 |  | 0.88d | 2006-10-28 08:30 A | 2006-10-30 17:00 A | 100% |  |  |  |
| 22 | 2.2.3 | 设计等级接口的方案 |  | 10.88d | 2006-10-31 08:00 A | 2006-11-14 17:00 A | 100% |  |  | finish no earlier than 2006-11-14 17:00 |
| 23 | 2.2.4 | 等级库方案设计方案 | milestone | 0d | 2006-11-14 17:00 A | 2006-11-14 17:00 A | 100% |  |  |  |
| 24 | 2.2.5 | 开发/测试等级库接口模块 |  | 9.88d | 2006-11-15 08:00 A | 2006-11-28 17:00 A | 100% |  |  |  |

| ID | WBS | Task | Type | Duration | Start | Finish | Complete | Remaining | Total slack | Constraint |
| --- | --- | --- | --- | --- | --- | --- | --- | --- | --- | --- |
| 25 | 2.3 | **元件库** |  | 32d? | 2006-10-13 08:00 A | 2006-11-27 18:00 | 98% | 0.66d? | 602.12d |  |
| 26 | 2.3.1 | **分析pdms元件库结构** |  | 25.88d | 2006-10-13 08:00 A | 2006-11-17 17:00 A | 100% |  |  |  |
| 27 | 2.3.1.1 | 了解CATALOGUE库 |  | 8d | 2006-10-13 08:30 A | 2006-10-25 08:30 A | 100% |  |  |  |
| 28 | 2.3.1.2 | 了解点集型集数据库 |  | 7.88d | 2006-10-13 08:00 A | 2006-10-24 17:00 A | 100% |  |  | finish no earlier than 2006-10-25 17:00 |
| 29 | 2.3.1.3 | pdms元件库结构报告 | milestone | 0d | 2006-10-25 17:00 A | 2006-10-25 17:00 A | 100% |  |  |  |
| 30 | 2.3.1.4 | 分析pdms元件库方案 |  | 1.88d | 2006-10-26 08:00 A | 2006-10-27 17:00 A | 100% |  |  |  |
| 31 | 2.3.1.5 | 提出元件数据库方案 |  | 6.88d | 2006-10-28 08:30 A | 2006-11-07 17:00 A | 100% |  |  |  |
| 32 | 2.3.1.6 | 完成元件数据库样本 |  | 8.88d | 2006-11-07 08:00 A | 2006-11-17 17:00 A | 100% |  |  | start no earlier than 2006-11-07 08:00 |
| 33 | 2.3.1.7 | 元件库设计方案 | milestone | 0d | 2006-11-17 17:00 A | 2006-11-17 17:00 A | 100% |  |  |  |
| 34 | 2.3.2 | 设计元件库接口 |  | 13.88d | 2006-11-07 08:00 A | 2006-11-24 17:00 A | 100% |  |  | start no earlier than 2006-11-07 08:00 |
| 35 | 2.3.3 | **编码/测试** |  | 1d? | 2006-11-27 08:30 | 2006-11-27 18:00 |  |  | 602.12d |  |
| 36 | 2.3.3.1 | 元件的匹配表接口 |  | 1d? | 2006-11-27 08:30 | 2006-11-27 18:00 |  |  | 264.12d | start no earlier than 2006-11-27 08:00 |
| 37 | 2.4 | **元件建模** |  | 48d? | 2006-10-09 08:30 A | 2006-12-13 18:00 | 75% | 12.13d? | 590.12d |  |
| 38 | 2.4.1 | **分析** |  | 9.88d | 2006-11-13 08:00 A | 2006-11-24 17:00 A | 100% |  |  |  |
| 39 | 2.4.1.1 | 分析设计元件库的接口 |  | 9.88d | 2006-11-13 08:00 A | 2006-11-24 17:00 A | 100% |  |  | finish no earlier than 2006-11-24 17:00 |
| 40 | 2.4.2 | **编码/测试** |  | 48d? | 2006-10-09 08:30 | 2006-12-13 18:00 |  |  | 590.12d |  |
| 41 | 2.4.2.1 | **元件查找修改** |  | 1d? | 2006-10-09 08:30 | 2006-10-09 18:00 |  |  | 637.12d |  |
| 42 | 2.4.2.1.1 | 设计分析 |  | 1d? | 2006-10-09 08:30 | 2006-10-09 18:00 |  |  | 299.12d |  |
| 43 | 2.4.2.2 | 元件库的管理模块 |  | 1d? | 2006-10-09 08:30 | 2006-10-09 18:00 |  |  | 299.12d |  |
| 44 | 2.4.2.3 | 元件的显示支持 |  | 5d? | 2006-12-07 08:30 | 2006-12-13 18:00 |  |  | 252.12d | start no earlier than 2006-12-07 08:00 |
| 45 | 2.4.3 | **点集行集模型** |  | 45d | 2006-10-11 08:00 A | 2006-12-12 18:00 | 89% | 4.8d | 591.12d |  |
| 46 | 2.4.3.1 | **基本图元** |  | 45d | 2006-10-11 08:00 A | 2006-12-12 18:00 | 89% | 4.8d | 591.12d |  |
| 47 | 2.4.3.1.1 | 分析基本图元类型 |  | 0.88d | 2006-10-11 08:00 A | 2006-10-11 17:00 A | 100% |  |  | start no earlier than 2006-10-11 08:00 |
| 48 | 2.4.3.1.2 | 开发/测试管道系统中的基本图元 |  | 15.88d | 2006-10-12 08:00 A | 2006-11-02 17:00 A | 100% |  |  |  |
| 49 | 2.4.3.1.3 | 基本图元程序 | milestone | 0d | 2006-11-02 16:00 A | 2006-11-02 16:00 A | 100% |  |  | start no earlier than 2006-10-11 08:00 |
| 50 | 2.4.3.1.4 | 补充基本图元和修改 |  | 2d | 2006-12-11 08:30 | 2006-12-12 18:00 |  |  | 253.12d | start no earlier than 2006-12-11 08:00 |

| ID | WBS | Task | Duration | Start | Finish | Complete | Remaining | Total slack | Free slack | Constraint | Deadline | Resources | Work | Actual work | Text1 |
| --- | --- | --- | --- | --- | --- | --- | --- | --- | --- | --- | --- | --- | --- | --- | --- |
| 51 | 2.5 | **布管** | 10d? | 2006-11-23 08:00 A | 2006-12-06 18:00 | 41% | 5.88d? | 595.12d |  |  |  |  |  |  |  |
| 52 | 2.5.1 | **需求分析** | 9d? | 2006-11-23 08:00 A | 2006-12-05 18:00 | 65% | 3.14d? | 596.12d |  |  |  |  |  |  |  |
| 53 | 2.5.1.1 | 分析管件定位的方式 | 2.88d | 2006-11-27 08:00 A | 2006-11-29 17:00 A | 100% |  |  |  | start no earlier than 2006-11-27 08:00 |  |  |  |  |  |
| 54 | 2.5.1.2 | 找出定位的具体计算方法 | 4d? | 2006-11-30 08:30 | 2006-12-05 18:00 |  |  | 258.12d |  | start no earlier than 2006-11-30 08:00 |  |  |  |  |  |
| 55 | 2.5.1.3 | 分析等级筛选的三通大小头选择问题 | 2.88d | 2006-11-27 08:00 A | 2006-11-29 17:00 A | 100% |  |  |  | start no earlier than 2006-11-27 08:00 |  |  |  |  |  |
| 56 | 2.5.1.4 | 分析官帽等单端面管件的筛选方式 | 2.88d | 2006-11-27 08:00 A | 2006-11-29 17:00 A | 100% |  |  |  | start no earlier than 2006-11-27 08:00 |  |  |  |  |  |
| 57 | 2.5.1.5 | 验证前面三项 | 0.44d | 2006-11-30 08:00 A | 2006-11-30 12:00 A | 100% |  |  |  | start no earlier than 2006-10-30 08:00 |  |  |  |  |  |
| 58 | 2.5.1.6 | 整理创建分支/管道 | 2.88d | 2006-11-27 08:00 A | 2006-11-29 17:00 A | 100% |  |  |  | start no earlier than 2006-11-27 08:00 |  |  |  |  |  |
| 59 | 2.5.1.7 | 分支的规则 | 5d | 2006-11-29 08:30 | 2006-12-05 18:00 |  |  | 258.12d |  | start no earlier than 2006-11-29 08:00 |  |  |  |  |  |
| 60 | 2.5.1.8 | 创建管件过程分析 | 4.88d | 2006-11-23 08:00 A | 2006-11-29 17:00 A | 100% |  |  |  | finish no earlier than 2006-11-29 17:00 |  |  |  |  |  |
| 61 | 2.5.2 | **布管设计** | 5d | 2006-11-30 08:30 | 2006-12-06 18:00 |  |  | 595.12d |  |  |  |  |  |  |  |
| 62 | 2.5.2.1 | 设计等级筛选 | 5d | 2006-11-30 08:30 | 2006-12-06 18:00 |  |  | 257.12d |  | start no earlier than 2006-11-30 08:00 |  |  |  |  |  |
| 63 | 2.5.2.2 | 设计创建等级 | 5d | 2006-11-30 08:30 | 2006-12-06 18:00 |  |  | 257.12d |  | start no earlier than 2006-11-30 08:00 |  |  |  |  |  |
| 64 | 2.5.2.3 | 设计创建管道 | 5d | 2006-11-30 08:30 | 2006-12-06 18:00 |  |  | 257.12d |  | start no earlier than 2006-11-30 08:00 |  |  |  |  |  |
| 65 | 3 | 2008PFA组开发 | 300d | 2008-01-17 08:30 A | 2009-03-06 18:00 | 5% | 285d | -79d | 0d | start no earlier than 2008-01-17 08:30 | 2008-11-17 18:00 |  |  |  |  |
| 66 | 4 | **管理** | 160.19d? | 2006-10-09 08:30 A | 2007-05-23 09:00 | 57% | 68.46d? | 477.94d |  |  |  |  | 15.9h | 8.9h |  |
| 67 | 4.1 | AutoPSA | 1d? | 2007-05-15 08:30 A | 2007-05-15 18:30 A | 100% |  |  |  | finish no earlier than 2006-10-10 18:00 |  |  |  |  |  |
| 68 | 4.2 | **AutoPD** | 26.06d | 2007-04-16 08:00 A | 2007-05-23 09:00 A | 100% |  |  |  |  |  |  | 8.9h | 8.9h |  |
| 69 | 4.2.1 | 辅导罗维,刘贻凤,尹笑辉，龙式荣 | 0.3d | 2007-04-16 08:00 A | 2007-04-16 10:24 A | 100% |  |  |  |  |  | 陈百炼 | 2.4h | 2.4h | AutoPD |
| 70 | 4.2.2 | 辅导尹笑辉查找插入阀门保存数据错误 | 0.2d | 2007-04-17 08:00 A | 2007-04-17 09:36 A | 100% |  |  |  |  |  | 陈百炼 | 1.6h | 1.6h | AutoPD |
| 71 | 4.2.3 | 辅导解决PD,PSA问题 | 0.3d | 2007-04-23 08:00 A | 2007-04-23 10:24 A | 100% |  |  |  | start no earlier than 2007-04-23 08:00 |  | 陈百炼 | 2.4h | 2.4h |  |
| 72 | 4.2.4 | 辅导构思修改西安华瑞材料明细表样式 | 0.31d | 2007-05-22 16:00 A | 2007-05-23 09:00 A | 100% |  |  |  | start no earlier than 2007-05-23 08:00 |  | 陈百炼 | 2.5h | 2.5h |  |
| 73 | 4.3 | AutoPDMS | 1d? | 2006-10-09 08:30 | 2006-10-09 18:00 |  |  | 637.12d |  |  |  |  |  |  |  |
| 74 | 4.4 | **其它管理** | 19.4d? | 2007-04-14 08:30 A | 2007-05-16 11:42 | 31% | 13.31d? | 484.6d |  |  |  |  | 7h |  |  |
| 75 | 4.4.1 | 重新调整Project(AutoPD,AutoPSA) | 0.88d? | 2007-04-14 08:30 | 2007-04-14 16:30 |  |  | 503.12d |  | finish no earlier than 2007-04-14 16:30 |  | 陈百炼 | 7h |  |  |
| 76 | 4.4.2 | 建立公司整个Project | 0.4d | 2007-05-16 08:30 A | 2007-05-16 11:42 A | 100% |  |  |  | start no earlier than 2007-05-16 08:00 |  |  |  |  |  |

Notes:
- 65: 我们主要完成PFA的流体，管道，管件，设备数据库，并且设计好用户可以添加自己或者读取用户的数据库，下半年把PFA加入到AutoPDMS里面。

| ID | WBS | Task | Duration | Start | Finish | Complete | Remaining | Total slack | Constraint | Resources | Work | Actual work | Text1 |
| --- | --- | --- | --- | --- | --- | --- | --- | --- | --- | --- | --- | --- | --- |
| 77 | 5 | **安装包的制作** | 66d? | 2007-04-17 08:00 A | 2007-07-13 18:00 | 90% | 6.81d? | 437d |  |  | 151.44h | 133.44h |  |
| 78 | 5.1 | 西安轻工院安装包制作、测试 | 1d | 2007-05-15 08:30 A | 2007-05-16 08:30 A | 100% |  |  | finish no earlier than 2007-05-15 18:00 | 刘玉春 | 8h | 8h |  |
| 79 | 5.2 | 个人版安装包(PHS7.0\PSA7.0\PD3.0) | 0.94d | 2007-05-14 08:30 A | 2007-05-15 08:30 A | 100% |  |  | start no earlier than 2007-05-14 08:30 | 刘玉春 [106.7%] | 8h | 8h |  |
| 80 | 5.3 | 西安轻工院安装包(PHS7.0\PSA7.0\PD3.0) | 0.94d | 2007-05-14 08:30 A | 2007-05-15 08:30 A | 100% |  |  | start no earlier than 2007-05-14 08:30 | 刘玉春 [106.7%] | 8h | 8h |  |
| 81 | 5.4 | 制作山东阳光，西安华瑞，西安轻工院安装包 | 0.8d | 2007-04-17 08:00 A | 2007-04-17 15:24 A | 100% |  |  |  | 陈百炼 | 6.4h | 6.4h | 安装包 |
| 82 | 5.5 | 制作PDMS3.0和PD4.0测试所用安装包 | 0.62d | 2007-05-14 08:30 | 2007-05-14 14:30 |  |  | 486.38d | start no earlier than 2007-05-14 08:30 | 王小亚 | 5h |  |  |
| 83 | 5.6 | 测试PD,法兰统计错误,修改后,做华瑞安装包(两次) | 0.5d | 2007-05-25 08:30 A | 2007-05-25 14:00 A | 100% |  |  | start no earlier than 2007-05-25 08:30 | 刘玉春 | 4h | 4h |  |
| 84 | 5.7 | 聊城市鲁西化工工程设计有限责任公司安装包，测试，上传。上传华瑞图块 | 0.38d? | 2007-05-26 08:30 A | 2007-05-28 11:30 A | 100% |  |  | start no earlier than 2007-05-30 08:00 | 刘玉春 | 3h | 3h |  |
| 85 | 5.8 | 上海新奇安装包,个人版新安装包 | 0.75d? | 2007-05-28 08:30 A | 2007-05-28 16:00 A | 100% |  |  | start no earlier than 2007-05-28 08:30 | 刘玉春 | 6h | 6h |  |
| 86 | 5.9 | 聊城市鲁西化工工程设计有限责任公司安装包，序列号与上次不一样（两个单机版） | 0.25d? | 2007-05-29 08:30 A | 2007-05-29 10:30 A | 100% |  |  | start no earlier than 2007-05-29 08:30 | 刘玉春 | 2h | 2h |  |
| 87 | 5.10 | 支吊架出组装图时，不能启动CAD、测试 | 1h | 2007-05-24 08:30 | 2007-05-24 09:30 |  |  | 476.88d | start no earlier than 2007-05-24 08:00 | 彭范庚 | 1h |  |  |
| 88 | 5.11 | 东方汽轮机厂安装包 | 0.5d | 2007-06-01 08:30 | 2007-06-01 14:00 |  |  | 469.5d | start no earlier than 2007-06-01 08:30 | 刘玉春 | 4h |  |  |
| 89 | 5.12 | 东方汽轮机厂安装包（改了图块） | 1d | 2007-06-07 08:30 A | 2007-06-07 18:00 A | 100% |  |  | start no earlier than 2007-06-07 08:30 | 刘玉春 | 8h | 8h |  |
| 90 | 5.13 | interface,pipefem重新编译，PD3.0，PSA7.0,PHS7.0重新做安装包,上传. | 0.38d | 2007-06-07 08:30 A | 2007-06-07 11:32 A | 100% |  |  | start no earlier than 2007-06-07 08:30 | 刘玉春 | 3.04h | 3.04h |  |
| 91 | 5.14 | 中国轻工业南宁设计工程有限公司安装包,刻盘. | 1d | 2007-06-07 08:30 A | 2007-06-07 18:00 A | 100% |  |  | start no earlier than 2007-06-07 08:30 | 刘玉春 [12.5%] | 1h | 1h |  |
| 92 | 5.15 | 东方汽轮机厂安装包(PD,PSA全套,单机版,测试,刻盘) | 1d | 2007-06-08 08:30 A | 2007-06-08 18:00 A | 100% |  |  | start no earlier than 2007-06-08 08:30 | 刘玉春 [50%] | 4h | 4h |  |
| 93 | 5.16 | 山东规化设计院安装包(2个不同图框版,2个单机版(密码不一样)) | 1d | 2007-06-11 08:30 | 2007-06-11 18:00 |  |  | 462d | start no earlier than 2007-06-11 08:00 | 刘玉春 | 8h |  |  |
| 94 | 5.17 | PSA,interface编译,PSA安装包,QQ上传给山东阳光刘少将.PHS,修改SORT数据库(connectCSPR\SPR\PASA,picture Cipe Date),42个院新图块上传. | 1d | 2007-06-13 08:30 A | 2007-06-13 18:00 A | 100% |  |  | start no earlier than 2007-06-18 08:00 | 刘玉春 | 8h | 8h |  |
| 95 | 5.18 | 修改山东阳光支吊架明细一览表,图框拉长105;中国化学工业桂林工程公司安装包 | 1d | 2007-06-15 08:30 A | 2007-06-15 18:00 A | 100% |  |  | start no earlier than 2007-06-15 08:30 | 刘玉春 | 8h | 8h |  |
| 96 | 5.19 | PHS,sort增加字段(BornSAEngName,BornSAEngChina);山东阳光A utoPHS7.0新安装包;刻盘:聊城鲁西2个单机版,山东化工规化院2个07版,一个04版. | 0.5d | 2007-06-18 08:30 A | 2007-06-18 14:00 A | 100% |  |  | start no earlier than 2007-06-18 08:30 | 刘玉春 | 4h | 4h |  |
| 97 | 5.20 | 桂林化工安装包(两个单机版) | 1d | 2007-06-21 08:30 A | 2007-06-21 18:00 A | 100% |  |  | start no earlier than 2007-06-21 08:30 | 刘玉春 [37.5%] | 3h | 3h |  |
| 98 | 5.21 | 编译pipefem,PSA测试，在ue154上安装VC.net2002 | 1d | 2007-06-26 08:30 A | 2007-06-26 18:00 A | 100% |  |  | start no earlier than 2007-06-26 08:30 | 刘玉春 | 8h | 8h |  |
| 99 | 5.22 | interface编译,PSA安装包,测试;waterpor,uewaspmobile,cifc97ifc67mobile编译,安装包 | 0.38d | 2007-06-28 08:30 A | 2007-06-28 11:30 A | 100% |  |  | start no earlier than 2007-06-28 08:30 | 刘玉春 | 3h | 3h |  |
| 100 | 5.23 | 湖北省电力勘测院安装包,修改sort,测试 | 1d | 2007-06-29 08:30 A | 2007-06-29 18:00 A | 100% |  |  | start no earlier than 2007-06-29 08:30 | 刘玉春 [50%] | 4h | 4h |  |
| 101 | 5.24 | pipefem编译,PSA安装包;uewasp编译,WaterPro打包,上传 | 0.25d | 2007-07-02 08:30 A | 2007-07-02 10:30 A | 100% |  |  | start no earlier than 2007-07-02 08:30 | 刘玉春 | 2h | 2h |  |
| 102 | 5.25 | 成都建材安装包 | 0.5d | 2007-07-05 08:30 A | 2007-07-05 14:00 A | 100% |  |  | start no earlier than 2007-07-05 08:30 | 刘玉春 | 4h | 4h |  |
| 103 | 5.26 | 成立技术质量部,学习单机版加密狗 | 1d | 2007-07-06 08:30 A | 2007-07-06 18:00 A | 100% |  |  | start no earlier than 2007-07-06 08:30 | 刘玉春 [50%] | 4h | 4h |  |
| 104 | 5.27 | 加密狗做安装包,PDARX编译,上午技术质量部测试组培训 | 1d | 2007-07-10 08:30 A | 2007-07-10 18:00 A | 100% |  |  | start no earlier than 2007-07-10 08:30 | 刘玉春 | 8h | 8h |  |
| 105 | 5.28 | 山东化工安装包,三个单机狗,四个光盘,07,04两个版本;邯郸张工,学习软件;网络狗试用;成都,王工,支座反力,管道对支座的力. | 1d | 2007-07-12 08:30 A | 2007-07-12 18:00 A | 100% |  |  | start no earlier than 2007-07-12 08:30 | 刘玉春 | 8h | 8h |  |
| 106 | 5.29 | 山东电建安装包;技术质量部会议,周总结,各成员找到定位. | 1d | 2007-07-13 08:30 A | 2007-07-13 18:00 A | 100% |  |  | start no earlier than 2007-07-13 08:00 | 刘玉春 | 8h | 8h |  |

| ID | WBS | Task | Duration | Start | Finish | Predecessors | Complete | Remaining | Total slack | Free slack | Constraint | Resources | Work | Actual work | Text1 |
| --- | --- | --- | --- | --- | --- | --- | --- | --- | --- | --- | --- | --- | --- | --- | --- |
| 107 | 6 | **会议** | 0.14d | 2007-04-23 08:00 A | 2007-04-23 09:36 A |  | 100% |  |  |  |  |  | 1.6h | 1.6h |  |
| 108 | 6.1 | **AutoPDMS** | 0.14d | 2007-04-23 08:00 A | 2007-04-23 09:36 A |  | 100% |  |  |  |  |  | 1.6h | 1.6h |  |
| 109 | 6.1.1 | PDMS开会 | 0.2d | 2007-04-23 08:00 A | 2007-04-23 09:36 A |  | 100% |  |  |  | start no earlier than 2007-04-23 08:00 | 陈百炼 | 1.6h | 1.6h |  |
| 110 | 7 | **技术支持** | 93d? | 2007-04-12 08:00 A | 2007-08-14 18:00 |  | 83% | 15.36d? | 413d |  |  |  | 287.62h | 230.02h |  |
| 111 | 7.1 | **管道设计集成包(AutoPD,AutoPSA,AutoPHS,AutoIPED)** | 93d? | 2007-04-12 08:00 A | 2007-08-14 18:00 |  | 83% | 15.36d? | 413d |  |  |  | 287.62h | 230.02h |  |
| 112 | 7.1.1 | **售前** | 58.44d? | 2007-05-14 08:30 A | 2007-07-25 12:00 |  | 55% | 26.47d? | 428.56d |  |  |  | 71.02h | 30.02h |  |
| 113 | 7.1.1.1 | 重庆远达环保,赛迪工程公司演示 | 1.94d | 2007-05-14 08:30 A | 2007-05-16 08:31 A |  | 100% |  |  |  | finish no earlier than 2007-05-15 18:00 | 陈百炼 | 16.02h | 16.02h |  |
| 114 | 7.1.1.2 | 重庆远达环保，刘工（PSA操作） | 1d? | 2007-05-30 08:30 A | 2007-05-30 18:00 A |  | 100% |  |  |  | start no earlier than 2007-05-30 08:30 | 刘玉春 [6.2%] | 0.5h | 0.5h |  |
| 115 | 7.1.1.3 | 东方汽轮机机厂的问题及解答,查资料 | 16h | 2007-06-04 08:30 | 2007-06-05 18:00 |  |  |  | 462.88d | 0d | start no earlier than 2007-06-04 08:30 | 彭范庚 | 16h |  |  |
| 116 | 7.1.1.4 | 东方汽轮机机厂的问题及解答,查资料 | 16h | 2007-06-06 08:30 | 2007-06-07 18:00 | 115 |  |  | 462.88d | 8d |  | 彭范庚 | 16h |  |  |
| 117 | 7.1.1.5 | 培训(化工业桂林)、查资料、解决问题等 | 4h | 2007-06-20 08:30 | 2007-06-20 14:00 | 116 |  |  | 454.88d | 0d | start no earlier than 2007-06-20 08:30 | 彭范庚 | 4h |  |  |
| 118 | 7.1.1.6 | 分析三维支吊架一个零件同一连接点有两种连接方式 | 5h | 2007-06-20 14:00 | 2007-06-21 09:30 | 117 |  |  | 454.88d |  |  | 彭范庚 | 5h |  |  |
| 119 | 7.1.1.7 | 甘肃酒泉钢铁有限责任公司,刘军昌,要求用视频会议室,视频演示. | 1d | 2007-06-11 08:30 A | 2007-06-11 18:00 A |  | 100% |  |  |  | start no earlier than 2007-06-11 08:30 | 刘玉春 [6.2%] | 0.5h | 0.5h |  |
| 120 | 7.1.1.8 | 长沙医药化工院,演示 | 0.44d | 2007-06-12 14:30 A | 2007-06-12 18:00 A |  | 100% |  |  |  | finish no earlier than 2007-06-12 18:00 | 刘玉春 | 3.5h | 3.5h |  |
| 121 | 7.1.1.9 | 长沙轻工院演示,安装 | 0.38d | 2007-06-27 15:00 A | 2007-06-27 18:00 A |  | 100% |  |  |  | finish no earlier than 2007-06-27 18:30 | 陈百炼 | 3h | 3h |  |
| 122 | 7.1.1.10 | 长沙轻工院新旧版本交流,安装 | 1d | 2007-06-27 08:30 A | 2007-06-27 18:00 A |  | 100% |  |  |  | start no earlier than 2007-07-05 08:00 | 刘玉春 [37.5%] | 3h | 3h |  |
| 123 | 7.1.1.11 | 江苏苏源演示,沟通 | 0.44d | 2007-07-25 08:30 A | 2007-07-25 12:00 A |  | 100% |  |  |  | finish no earlier than 2007-07-25 12:00 | 陈百炼 | 3.5h | 3.5h |  |
| 124 | 7.1.2 | **售后** | 93d? | 2007-04-12 08:00 A | 2007-08-14 18:00 |  | 93% | 6.92d? | 413d |  |  |  | 216.6h | 200h |  |
| 125 | 7.1.2.1 | 上海新客户(安装试用) | 1d | 2007-05-15 08:30 A | 2007-05-16 08:30 A |  | 100% |  |  |  | finish no earlier than 2007-05-15 18:00 | 刘玉春 | 8h | 8h |  |
| 126 | 7.1.2.2 | 江西煤炭院（PSA节点、位移 、荷载查询等基本操作） | 1d | 2007-05-15 08:30 A | 2007-05-16 08:30 A |  | 100% |  |  |  | finish no earlier than 2007-05-15 18:00 | 刘玉春 | 8h | 8h |  |
| 127 | 7.1.2.3 | 大庆新客户（基本操作） | 1d | 2007-05-15 08:30 A | 2007-05-16 08:30 A |  | 100% |  |  |  | finish no earlier than 2007-05-15 18:00 | 刘玉春 | 8h | 8h |  |
| 128 | 7.1.2.4 | 航三院周工(PD 出图基本操作) | 0.94d | 2007-05-14 08:30 A | 2007-05-15 08:30 A |  | 100% |  |  |  | start no earlier than 2007-05-14 08:30 | 刘玉春 [106.7%] | 8h | 8h |  |
| 129 | 7.1.2.5 | 四川电力文工(荷载\位移等取整) | 0.94d | 2007-05-14 08:30 A | 2007-05-15 08:30 A |  | 100% |  |  |  | start no earlier than 2007-05-14 08:30 | 刘玉春 [106.7%] | 8h | 8h |  |
| 130 | 7.1.2.6 | 江西煤炭院杨工,秦工(PSA 新算法基本操作) | 0.94d | 2007-05-14 08:30 A | 2007-05-15 08:30 A |  | 100% |  |  |  | start no earlier than 2007-05-14 08:30 | 刘玉春 [106.7%] | 8h | 8h |  |
| 131 | 7.1.2.7 | 解决山东阳光建议 | 0.5d | 2007-04-12 08:00 A | 2007-04-12 12:00 A |  | 100% |  |  |  |  | 陈百炼 | 4h | 4h | 技术支持 |
| 132 | 7.1.2.8 | 解决西安华瑞建议 | 0.5d | 2007-04-12 12:00 A | 2007-04-12 17:00 A |  | 100% |  |  |  |  | 陈百炼 | 4h | 4h | 技术支持 |
| 133 | 7.1.2.9 | 处理刘玉春在外问题 | 0.7d | 2007-04-16 08:00 | 2007-04-16 14:36 |  |  |  | 503.3d |  | start no earlier than 2007-04-16 08:00 | 陈百炼 | 5.6h |  |  |
| 134 | 7.1.2.10 | 出差 | 3d | 2007-04-18 08:00 A | 2007-04-20 17:00 A |  | 100% |  |  |  | start no earlier than 2007-04-18 08:00 | 陈百炼 | 24h | 24h | 技术支持 |
| 135 | 7.1.2.11 | 客户支持2小时 | 2h | 2007-05-09 08:30 A | 2007-05-09 10:30 A |  | 100% |  |  |  | start no earlier than 2007-05-09 08:30 | 彭范庚 | 2h | 2h |  |
| 136 | 7.1.2.12 | 协助做"西安华瑞"安装包,并解决测试过程中的发现的问题。 | 1d | 2007-05-08 08:30 A | 2007-05-09 08:30 A |  | 100% |  |  |  | start no earlier than 2007-05-08 08:30 | 彭范庚 | 8h | 8h |  |
| 137 | 7.1.2.13 | 四川电力院安装包,客户支持 | 5h | 2007-05-10 08:30 A | 2007-05-10 14:30 A |  | 100% |  |  |  | start no earlier than 2007-05-10 08:30 | 彭范庚 | 5h | 5h |  |
| 138 | 7.1.2.14 | 四川电力院安装包,解决客户问题 | 6h | 2007-05-11 08:30 A | 2007-05-11 15:30 A |  | 100% |  |  |  |  | 彭范庚 | 6h | 6h |  |
| 139 | 7.1.2.15 | 上海新奇客户交流,协助做西安轻工院安装包及测试 | 0.94d | 2007-05-14 08:30 A | 2007-05-15 08:30 A |  | 100% |  |  |  | start no earlier than 2007-05-14 08:30 | 彭范庚 [106.7%] | 8h | 8h |  |
| 140 | 7.1.2.16 | 和西安华瑞客户讨论支吊架问题 | 2h | 2007-05-22 08:30 | 2007-05-22 10:30 |  |  |  | 478.75d |  | start no earlier than 2007-05-22 08:00 | 彭范庚 | 2h |  |  |
| 141 | 7.1.2.17 | 协助做西安轻工院安装包及测试 | 3.5h | 2007-05-15 08:30 A | 2007-05-15 12:00 A |  | 100% |  |  |  | start no earlier than 2007-05-15 08:30 | 彭范庚 | 3.5h | 3.5h |  |
| 142 | 7.1.2.18 | 西北电力设计院当面沟通 | 0.6d | 2007-05-16 11:42 | 2007-05-16 18:00 | 76 |  |  | 484d |  | finish no earlier than 2007-05-16 11:42 |  |  |  |  |
| 143 | 7.1.2.19 | 西安华瑞客户交流、南通巨力弹簧厂 | 4h | 2007-05-17 08:00 A | 2007-05-17 14:00 A |  | 100% |  |  |  | start no earlier than 2007-05-17 08:00 | 彭范庚 [125%] | 5h | 5h |  |
| 144 | 7.1.2.20 | 山东阳光恒吊选择 | 1h | 2007-05-17 08:30 A | 2007-05-17 09:30 A |  | 100% |  |  |  | start no earlier than 2007-05-17 08:00 | 彭范庚 | 1h | 1h |  |
| 145 | 7.1.2.21 | 西安华瑞计算结果和CAESARII结果比较 | 0.12d | 2007-05-17 08:30 A | 2007-05-17 09:30 A |  | 100% |  |  |  | finish no earlier than 2007-05-17 08:30 | 陈百炼 | 1h | 1h |  |
| 146 | 7.1.2.22 | 山东煤炭,固定支架G48怎样选型 | 1.5h | 2007-05-18 08:30 | 2007-05-18 10:00 |  |  |  | 482.81d |  | start no earlier than 2007-05-18 08:00 | 彭范庚 | 1.5h |  |  |
| 147 | 7.1.2.23 | 查找西北市政院AutoPSA和CAESARII埋地结查不一样 | 0.12d | 2007-05-18 13:30 A | 2007-05-18 14:30 A |  | 100% |  |  |  | start no earlier than 2007-05-18 13:30 | 陈百炼 | 1h | 1h |  |
| 148 | 7.1.2.24 | 查找核二院改变补偿器重量,支座反力不变 | 0.12d | 2007-05-22 15:00 A | 2007-05-22 16:00 A |  | 100% |  |  |  | finish no earlier than 2007-05-22 16:00 | 陈百炼 | 1h | 1h |  |
| 149 | 7.1.2.25 | 查找核四院应力结果和Glif不同,回复核2院问题 | 0.12d | 2007-05-24 14:00 A | 2007-05-24 15:00 A |  | 100% |  |  |  | finish no earlier than 2007-05-24 15:00 | 陈百炼 | 1h | 1h |  |
| 150 | 7.1.2.26 | 解决湖南百利的问题(如:滑动支架等) | 3h | 2007-05-25 08:30 A | 2007-05-25 11:30 A |  | 100% |  |  |  | start no earlier than 2007-05-25 08:00 | 彭范庚 | 3h | 3h |  |
| 151 | 7.1.2.27 | 南京水泥升级 | 0.06d? | 2007-05-25 08:30 A | 2007-05-25 09:00 A |  | 100% |  |  |  | start no earlier than 2007-05-25 08:30 | 刘玉春 | 0.5h | 0.5h |  |
| 152 | 7.1.2.28 | 邯郸规化院，张工（新老版本不同点)；河北秦皇岛，孙工（同上相似，04年购买，要求升级）；辽宁节能，李工，修改错误 | 0.25d? | 2007-05-28 08:30 A | 2007-05-28 10:30 A |  | 100% |  |  |  | start no earlier than 2007-05-28 08:30 | 刘玉春 | 2h | 2h |  |
| 153 | 7.1.2.29 | 选择恒吊(南通巨力)、帮助调试Form (三维支吊架表格) | 4h | 2007-06-01 08:30 | 2007-06-01 14:00 |  |  |  | 469.5d |  | start no earlier than 2007-06-01 08:00 | 彭范庚 | 4h |  |  |
| 154 | 7.1.2.30 | 华东石油局管架分厂分析大型支吊架的添加情况和查相关资料 | 0.5h | 2007-05-25 08:30 A | 2007-05-25 09:00 A |  | 100% |  |  |  | start no earlier than 2007-05-25 08:00 | 彭范庚 | 0.5h | 0.5h |  |
| 155 | 7.1.2.31 | 核二院，方工，解释一次应力与二次应力为何许用应力有多种（材质不一样）；河北秦皇岛，孙工（共享违例） | 0.25d | 2007-05-29 08:30 A | 2007-05-29 10:30 A |  | 100% |  |  |  | start no earlier than 2007-05-29 08:30 | 刘玉春 | 2h | 2h |  |
| 156 | 7.1.2.32 | 山东阳光,王工,解释弹簧相对、绝对压缩值，及PHS出图如何选择这两种情况。 | 1d | 2007-05-31 08:30 A | 2007-05-31 18:00 A |  | 100% |  |  |  | start no earlier than 2007-05-31 08:30 | 刘玉春 [12.5%] | 1h | 1h |  |
| 157 | 7.1.2.33 | 河南矿山~~设计院，彤工，安装出现非法用户 | 0.06d | 2007-05-31 08:30 A | 2007-05-31 09:00 A |  | 100% |  |  |  | start no earlier than 2007-05-31 08:30 | 刘玉春 | 0.5h | 0.5h |  |
| 158 | 7.1.2.34 | 江西省纺织工业科研设计院，夏工，PSA计算问题，需要升级 | 0.06d | 2007-06-07 08:30 A | 2007-06-07 09:00 A |  | 100% |  |  |  | start no earlier than 2007-06-07 08:30 | 刘玉春 | 0.5h | 0.5h |  |
| 159 | 7.1.2.35 | 辽宁高科设计院，王工，轴测图输出，操作问题。 | 0.06d | 2007-06-07 08:30 A | 2007-06-07 09:00 A |  | 100% |  |  |  | start no earlier than 2007-06-07 08:30 | 刘玉春 | 0.5h | 0.5h |  |
| 160 | 7.1.2.36 | 四川电力院,Z8不能超过50度,Z11可接弹簧等问题 | 2.5h | 2007-06-13 08:30 | 2007-06-13 11:00 |  |  |  | 460.69d |  | start no earlier than 2007-06-13 08:00 | 彭范庚 | 2.5h |  |  |
| 161 | 7.1.2.37 | 山东阳光,王工,PSA中为何出现两个OPE工况 | 0.25d | 2007-06-11 08:30 A | 2007-06-11 10:30 A |  | 100% |  |  |  | start no earlier than 2007-06-11 08:30 | 刘玉春 | 2h | 2h |  |
| 162 | 7.1.2.38 | 山东阳光,王明银,PSA坐标改变,结果不一样,请教张博士,约束方向矢量没发生变化,需要修改 | 2d | 2007-06-12 08:30 A | 2007-06-13 18:00 A |  | 100% |  |  |  | finish no earlier than 2007-06-13 18:00 | 刘玉春 [25%] | 4h | 4h |  |
| 163 | 7.1.2.39 | 五洲工程,金工,仿CII计算不了(约束不正确,重复约束);核四院,卢春田,外径/壁厚>100为何不能计算;长沙医药化工,庞院长,帮画管道,与CII比较;秦皇岛,孙工,PD导出错误(操作问题);山东阳光,王工,管道一复杂,PSA计算死机(正在查找原因) | 1d? | 2007-06-14 08:30 A | 2007-06-14 18:00 A |  | 100% |  |  |  | start no earlier than 2007-06-14 08:30 | 刘玉春 [50%] | 4h | 4h |  |
| 164 | 7.1.2.40 | 解决山东阳光表格(生根面、中英对照等)和陈乃其弹簧选型、华东院格式的表格 | 12h | 2007-06-15 08:30 A | 2007-06-18 14:00 A |  | 100% |  |  |  | start no earlier than 2007-06-15 08:30 | 彭范庚 | 12h | 12h |  |
| 165 | 7.1.2.41 | 恒吊计算通不过、材料属性数据资料等 | 1h | 2007-06-19 08:30 | 2007-06-19 09:30 |  |  |  | 456.88d |  | start no earlier than 2007-06-19 08:30 | 彭范庚 | 1h |  |  |
| 166 | 7.1.2.42 | 解决山东阳光水平方向两点位移方向不一致问题 | 0.25d | 2007-06-20 14:00 A | 2007-06-20 16:00 A |  | 100% |  |  |  | start no earlier than 2007-06-20 14:00 | 陈百炼 | 2h | 2h |  |
| 167 | 7.1.2.43 | 山东阳光,王工(PD导出错误,修改次数过多,重新编号即可) | 1d | 2007-06-18 08:30 A | 2007-06-18 18:00 A |  | 100% |  |  |  | start no earlier than 2007-06-18 08:30 | 刘玉春 [6.2%] | 0.5h | 0.5h |  |
| 168 | 7.1.2.44 | 北京有色设计院,王智敏,(端点热位移大于40,计算死机)通知刘贻凤修改 | 1d | 2007-06-19 08:30 A | 2007-06-19 18:00 A |  | 100% |  |  |  | start no earlier than 2007-06-19 08:30 | 刘玉春 [6.2%] | 0.5h | 0.5h |  |
| 169 | 7.1.2.45 | 五洲工程,金工(如何设埋地;两种温度情况,工况如何分配;PD中滑动支架是否能只限一个方向) | 1d | 2007-06-21 08:30 A | 2007-06-21 18:00 A |  | 100% |  |  |  | start no earlier than 2007-06-21 08:30 | 刘玉春 [12.5%] | 1h | 1h |  |
| 170 | 7.1.2.46 | 五洲工程,金工(埋地计算出现负值) | 1d | 2007-06-22 08:30 A | 2007-06-22 18:00 A |  | 100% |  |  |  | start no earlier than 2007-06-22 08:30 | 刘玉春 [12.5%] | 1h | 1h |  |
| 171 | 7.1.2.47 | 上传PSA,PHS最新版,通知下载 | 1d | 2007-06-22 08:30 A | 2007-06-22 18:00 A |  | 100% |  |  |  | start no earlier than 2007-06-22 08:30 | 刘玉春 [25%] | 2h | 2h |  |
| 172 | 7.1.2.48 | 解决陈延安出差问题；广西建筑设计院，小邱PSA计算，PHS出图；聊城，张工，两弯头中没直单元，计算死机；桂林化工，吴工，PD安装问题。 | 1d | 2007-06-25 08:30 A | 2007-06-25 18:00 A |  | 100% |  |  |  | start no earlier than 2007-06-25 08:30 | 刘玉春 | 8h | 8h |  |
| 173 | 7.1.2.49 | 广西建筑设计院,小邱,集成包学习;桂林化工,吴工,PD出图操作. | 1d | 2007-06-27 08:30 A | 2007-06-27 18:00 A |  | 100% |  |  |  | start no earlier than 2007-06-27 08:30 | 刘玉春 [50%] | 4h | 4h |  |
| 174 | 7.1.2.50 | 天辰,安工,无法读取.in文件(需要修改代码);写加密方式(市场销售部蒋永丽) | 0.5d | 2007-06-28 08:30 A | 2007-06-28 14:00 A |  | 100% |  |  |  | start no earlier than 2007-06-28 08:30 | 刘玉春 | 4h | 4h |  |
| 175 | 7.1.2.51 | 岳阳,陈工,如何画空间管道;武汉轻工院,刘工,提取out文件到PHS中,没有结构/工作荷载(重新计算,再抽取,OK) | 0.12d | 2007-07-02 08:30 A | 2007-07-02 09:30 A |  | 100% |  |  |  | start no earlier than 2007-07-02 08:30 | 刘玉春 | 1h | 1h |  |
| 176 | 7.1.2.52 | 解说岳阳陈工的所有问题 | 0.5d | 2007-08-14 14:00 A | 2007-08-14 18:00 A |  | 100% |  |  |  | finish no earlier than 2007-08-14 18:00 | 陈百炼 | 4h | 4h |  |

| ID | WBS | Task | Duration | Start | Finish | Complete | Remaining | Total slack | Constraint | Resources | Work | Actual work |
| --- | --- | --- | --- | --- | --- | --- | --- | --- | --- | --- | --- | --- |
| 177 | 7.1.2.53 | 武汉轻工院,刘工,PSA单元数据分类列表,弯管中为何角度、壁厚为0,弹簧最大允许位移为9999.99 | 1d | 2007-07-05 08:30 A | 2007-07-05 18:00 A | 100% |  |  | start no earlier than 2007-07-05 08:30 | 刘玉春 [12.5%] | 1h | 1h |
| 178 | 7.1.2.54 | 新员工入职培训,核四院孙工,46 热态吊零;陈延安出差山东化工问题 | 1d | 2007-07-09 08:30 A | 2007-07-09 18:00 A | 100% |  |  | start no earlier than 2007-07-09 08:30 | 刘玉春 | 8h | 8h |
| 179 | 7.1.2.55 | 岳阳陈工,如何增加阀门;南昌有色院,宋冬根,in文件读取错误;山东化工院图签更改,重新做安装包 | 1d | 2007-07-11 08:30 A | 2007-07-11 18:00 A | 100% |  |  | start no earlier than 2007-07-11 08:30 | 刘玉春 | 8h | 8h |
| 180 | 8 | **客户培训** | 54d? | 2007-04-24 08:00 A | 2007-07-04 18:00 A | 100% |  |  |  |  | 87.5h | 87.5h |
| 181 | 8.1 | 客户培训 | 0.5d? | 2007-04-24 08:00 A | 2007-04-24 12:00 A | 100% |  |  | start no earlier than 2007-04-24 08:00 | 陈百炼 | 4h | 4h |
| 182 | 8.2 | 客户培训 | 3d? | 2007-05-22 08:30 A | 2007-05-24 18:00 A | 100% |  |  | start no earlier than 2007-05-22 08:30 | 刘玉春 | 24h | 24h |
| 183 | 8.3 | 客户培训 | 0.5d | 2007-04-25 08:00 A | 2007-04-25 12:00 A | 100% |  |  | start no earlier than 2007-04-25 08:00 | 陈百炼 | 4h | 4h |
| 184 | 8.4 | 客户培训 | 3d | 2007-06-04 08:30 A | 2007-06-06 18:00 A | 100% |  |  | finish no earlier than 2007-06-06 18:00 | 刘玉春 [81.2%] | 19.5h | 19.5h |
| 185 | 8.5 | 第21届客户培训 | 2.5d? | 2007-06-19 08:30 A | 2007-06-21 14:00 A | 100% |  |  | start no earlier than 2007-06-19 08:30 | 刘玉春 | 20h | 20h |
| 186 | 8.6 | 刻盘,试用版,湖北电力勘测院;下午出差 | 2d | 2007-07-03 08:30 A | 2007-07-04 18:00 A | 100% |  |  | start no earlier than 2007-07-03 08:30 | 刘玉春 | 16h | 16h |
| 187 | 9 | **网络系统维护** | 39.5d | 2007-05-14 08:30 A | 2007-06-29 14:00 | 47% | 20.88d | 447.5d |  |  | 38h | 16.3h |
| 188 | 9.1 | 维护公司论坛和网络出现的一些小问题（如瑞星的升级） | 1.68d | 2007-05-14 08:30 A | 2007-05-15 15:54 | 35% | 1.09d | 485.26d | start no earlier than 2007-05-14 08:30 | 王小亚 [134.3%] | 18h | 6.3h |
| 189 | 9.2 | 为新用户增加腾讯通用户 | 0.12d | 2007-05-17 08:30 | 2007-05-17 09:30 |  |  | 483.88d | start no earlier than 2007-05-17 08:30 | 王小亚 | 1h |  |
| 190 | 9.3 | DTAT,SYSTEM及部分机子查杀病毒,系统中心升级 | 0.75d | 2007-05-30 18:00 A | 2007-06-01 18:00 |  | 0.75d | 469d | finish no earlier than 2007-06-01 18:00 | 刘玉春 | 6h |  |
| 191 | 9.4 | 每天瑞星系统中心升级,data安装漏洞补丁 | 0.38d | 2007-06-15 15:00 | 2007-06-15 18:00 |  |  | 458d | finish no earlier than 2007-06-15 18:00 | 刘玉春 | 3h |  |
| 192 | 9.5 | 销售陪查杀病毒,安装安全卫士,李雅妮重装系统 | 1d | 2007-06-14 08:30 A | 2007-06-14 18:00 A | 100% |  |  | start no earlier than 2007-06-14 08:30 | 刘玉春 [75%] | 6h | 6h |
| 193 | 9.6 | 周春红机子,VA终结者,查杀病毒;DATA,处理software不能新建文件夹问题 | 0.5d | 2007-06-29 08:30 A | 2007-06-29 14:00 A | 100% |  |  | start no earlier than 2007-06-29 08:30 | 刘玉春 | 4h | 4h |
| 194 | 10 | **其它** | 72d? | 2007-03-27 08:00 A | 2007-07-02 18:00 |  | 71.68d? | 446d |  |  | 542h | 2.4h |
| 195 | 10.1 | 刻录光盘 | 0.5d | 2007-05-14 08:30 A | 2007-05-18 18:00 | 20% | 0.4d | 482d | finish no earlier than 2007-05-18 18:00 | 王小亚 | 4h | 0.8h |
| 196 | 10.2 | 制作公司软件启动时的新setup位图 | 0.25d | 2007-05-14 08:30 A | 2007-05-14 10:30 | 80% | 0.05d | 486.75d | start no earlier than 2007-05-14 08:30 | 王小亚 | 2h | 1.6h |
| 197 | 10.3 | 发布培训会的邀请函 | 67d? | 2007-03-27 08:00 | 2007-07-02 18:00 |  |  | 446d | finish no earlier than 2007-07-02 18:00 | 王小亚 | 536h |  |
| 198 | 11 | **模板1** | 468.12d? | 2006-10-09 08:30 A | 2008-07-11 18:00 | 2% | 457.81d? | 170d |  |  | 1016h | 2h |
| 199 | 11.1 | 目标分析 | 1d? | 2006-10-09 08:30 | 2006-10-09 18:00 |  |  | 637.12d |  |  |  |  |
| 200 | 11.2 | 分析/软件需求 | 14d | 2006-10-09 08:30 | 2006-10-26 18:00 |  |  | 624.12d |  |  |  |  |
| 201 | 11.3 | 设计规范书的撰写 | 14.5d | 2006-10-09 08:30 | 2006-10-27 14:00 |  |  | 623.62d |  |  |  |  |
| 202 | 11.4 | 开发任务分解 | 1d? | 2006-10-09 08:30 | 2006-10-09 18:00 |  |  | 637.12d |  |  |  |  |
| 203 | 11.5 | 编码 | 133.06d | 2006-10-09 08:30 | 2007-04-12 17:30 |  |  | 505.06d |  |  |  |  |

| ID | WBS | Task | Duration | Start | Finish | Predecessors | Complete | Remaining | Total slack | Free slack | Constraint | Deadline | Resources | Work | Actual work |
| --- | --- | --- | --- | --- | --- | --- | --- | --- | --- | --- | --- | --- | --- | --- | --- |
| 204 | 11.6 | **测试** | 133d? | 2006-10-09 08:30 A | 2007-04-12 17:00 |  | 37% | 84d? | 505.12d |  |  |  |  |  |  |
| 205 | 11.6.1 | **黑盒测试** | 133d? | 2006-10-09 08:30 A | 2007-04-12 17:00 |  | 47% | 70.93d? | 505.12d |  |  |  |  |  |  |
| 206 | 11.6.1.1 | 测试用例编写 | 0.88d? | 2007-04-12 08:00 A | 2007-04-12 17:00 A |  | 100% |  |  |  |  |  |  |  |  |
| 207 | 11.6.1.2 | 用例测试 | 1d? | 2006-10-09 08:30 | 2006-10-09 18:00 |  |  |  | 637.12d |  |  |  |  |  |  |
| 208 | 11.6.2 | **白盒测试** | 133d? | 2006-10-09 08:30 A | 2007-04-12 17:00 |  | 30% | 92.52d? | 505.12d |  |  |  |  |  |  |
| 209 | 11.6.2.1 | 测试用例编写 | 0.88d? | 2007-04-12 08:00 A | 2007-04-12 17:00 A |  | 100% |  |  |  |  |  |  |  |  |
| 210 | 11.6.2.2 | 用例测试 | 1d? | 2006-10-09 08:30 | 2006-10-09 18:00 |  |  |  | 637.12d |  |  |  |  |  |  |
| 211 | 11.6.2.3 | 测试报告撰写 | 1d? | 2006-10-09 08:30 | 2006-10-09 18:00 |  |  |  | 637.12d |  |  |  |  |  |  |
| 212 | 11.7 | 培训 | 45.75d | 2006-10-09 08:30 | 2006-12-11 16:00 |  |  |  | 592.38d |  |  |  |  |  |  |
| 213 | 11.8 | 文档 | 30.5d | 2006-10-09 08:30 | 2006-11-20 14:00 |  |  |  | 607.62d |  |  |  |  |  |  |
| 214 | 11.9 | **客户培训** | 130d | 2008-01-17 08:30 A | 2008-07-11 18:00 |  | 5% | 123.5d | 0d |  |  |  | 彭范庚 | 1016h | 2h |
| 215 | 11.9.1 | 上半年的任务 | 130d | 2008-01-17 08:30 A | 2008-07-11 18:00 |  | 5% | 123.5d | -18d | 0d | start no earlier than 2008-01-17 08:30 | 2008-06-17 18:00 |  |  |  |
| 216 | 12 | **2008PFA工作任务** | 214d? | 2008-01-25 08:30 A | 2008-11-14 18:00 |  |  | 213.81d? | 80d |  |  |  | 姚亚平; 罗绍卓 | 4397.6h | 9.83h |
| 217 | 12.1 | **上半年工作任务** | 68d? | 2008-01-25 08:30 A | 2008-04-24 18:00 |  |  | 67.7d? | 226d |  |  |  |  | 1021.6h | 6.78h |
| 218 | 12.1.1 | **数据库开发第一次迭代** | 68d? | 2008-01-25 08:30 A | 2008-04-24 18:00 |  |  | 67.7d? | 226d |  |  |  |  | 1021.6h | 6.78h |
| 219 | 12.1.1.1 | **流体，管件数据库读取完成** | 23d | 2008-01-25 08:30 A | 2008-02-22 18:00 |  | 1% | 22.7d | 227d | 0d |  |  | 姚亚平; 罗绍卓 | 669.6h | 6.78h |
| 220 | 12.1.1.1.1 | 完成PFA数据库访问基本功能 | 4d | 2008-01-25 08:30 A | 2008-01-30 18:00 |  | 8% | 3.7d | 0d |  | finish no later than 2008-01-30 18:00 |  | 姚亚平; 罗绍卓 | 61.6h | 2.4h |
| 221 | 12.1.1.1.2 | 研究AFT中美国管件的数据库 | 2.5d | 2008-01-31 08:30 | 2008-02-04 14:00 | 220 |  |  | 227d | 0d |  |  | 姚亚平; 罗绍卓 | 40h |  |
| 222 | 12.1.1.1.3 | 对研究李双平输入的美国管件数据库 | 1d | 2008-02-04 14:00 | 2008-02-05 14:00 | 221 |  |  | 227d | 0d |  |  | 姚亚平; 罗绍卓 | 16h |  |
| 223 | 12.1.1.1.4 | 研究其他国家的管件数据库 | 2.5d | 2008-02-05 14:00 | 2008-02-07 18:00 | 222 |  |  | 227d | 0d |  |  | 姚亚平; 罗绍卓 | 40h |  |
| 224 | 12.1.1.1.5 | 研究李双平输入的各个国家数据库 | 1d | 2008-02-08 08:30 | 2008-02-08 18:00 | 223 |  |  | 227d | 0d |  |  | 姚亚平; 罗绍卓 | 16h |  |
| 225 | 12.1.1.1.6 | **研究中国管件数据库** | 7d | 2008-02-09 08:00 | 2008-02-16 17:00 | 224 |  |  | 227d |  |  |  | 姚亚平; 罗绍卓 | 80h |  |
| 226 | 12.1.1.1.6.1 | 三通 | 2d | 2008-02-09 08:00 | 2008-02-11 18:00 |  |  |  | 227d | 0d | start no earlier than 2008-01-24 08:00 |  |  |  |  |
| 227 | 12.1.1.1.6.2 | 弯头 | 2d | 2008-02-12 08:30 | 2008-02-13 18:00 | 226 |  |  | 227d | 0d | start no earlier than 2008-01-24 08:00 |  |  |  |  |
| 228 | 12.1.1.1.6.3 | 阀门 | 2d | 2008-02-14 08:30 | 2008-02-15 18:00 | 227 |  |  | 227d | 0d | start no earlier than 2008-01-24 08:00 |  |  |  |  |
| 229 | 12.1.1.1.6.4 | 其他 | 1d | 2008-02-16 08:00 | 2008-02-16 17:00 | 228 |  |  | 227d | 0d | start no earlier than 2008-01-24 08:00 |  |  |  |  |
| 230 | 12.1.1.1.7 | 研究李双平输入的中国数据库 | 1d | 2008-02-18 08:30 | 2008-02-18 18:00 | 229 |  |  | 227d | 0d |  |  | 姚亚平; 罗绍卓 | 16h |  |
| 231 | 12.1.1.1.8 | 完成各中标准数据库读入设计 | 1d | 2008-02-19 08:30 | 2008-02-19 18:00 | 230 |  |  | 227d | 0d |  |  | 姚亚平; 罗绍卓 | 16h |  |
| 232 | 12.1.1.1.9 | 完成各种数据库的读入 | 2d | 2008-02-20 08:30 | 2008-02-21 18:00 | 231 |  |  | 227d | 0d |  |  | 姚亚平; 罗绍卓 | 32h |  |
| 233 | 12.1.1.1.10 | 测试各种数据库的读入 | 1d | 2008-02-22 08:30 | 2008-02-22 18:00 | 232 |  |  | 227d |  |  |  | 姚亚平; 罗绍卓 | 16h |  |
| 234 | 12.1.1.2 | 管道，设备数据库读取完成 | 44d? | 2008-02-25 08:30 | 2008-04-24 18:00 | 219 |  |  | 226d |  |  |  | 姚亚平 | 352h |  |
| 235 | 12.2 | 下半年主要聚成到PFA | 132d | 2008-05-15 08:30 | 2008-11-14 18:00 |  |  |  | 80d |  | start no earlier than 2008-05-15 08:30 |  |  |  |  |
| 236 | 12.3 | 把PFA聚成到AutoPDMS | 132d | 2008-05-15 08:30 | 2008-11-14 18:00 |  |  |  | 80d |  | start no earlier than 2008-05-15 08:30 |  |  |  |  |

Notes:
- 215: 完成PFA的数据库
- 216: 完成PFA数据库及聚成到AutoPDMS
- 217: 完成PFA流体，管道，设备，管件数据库，并且可以让用户添加数据库
- 218: 主要完成管道，流体，管件，设备的读取任务。
- 235: 聚成到AutoPDMS里面。
